# 12ST1121-Technical

Schedule from MS Project XML, 2012-12-14 to 2013-10-01, A marks actual dates.

## Calendars

- Standard: Mon-Fri 08:00-12:00, 13:00-17:00; Sat-Sun off.

## Resources

| Resource | Rate |
| --- | --- |
| NCI Documentation |  |
| NCI Project Officer |  |
| NCI Quality Assurance |  |
| NCI Systems |  |
| Project Manager | 150 |
| SAIC-F Technical Project Manager |  |
| Software Architect | 160 |
| Software Developer | 120 |

## Schedule

| ID | WBS | Task | Duration | Start | Predecessors | Complete | Remaining | Total slack | Constraint | Resources | Work | Actual work |
| --- | --- | --- | --- | --- | --- | --- | --- | --- | --- | --- | --- | --- |
| 1 | 1 | Operations, Maintenance, and Support | 9mo | 2013-01-22 |  |  |  | 0d | must finish on 2013-09-30 | Software Developer |  |  |
| 2 | 2 | **Iteration 1 - Design Approach** | 0d | 2012-12-14 |  | 3% |  | 0d | must start on 2013-01-03 |  |  |  |
| 3 | 2.1 | Start | 0h | 2013-01-03 A |  | 100% | 0h | 0d |  |  |  |  |
| 4 | 2.2 | Project Kickoff | 2.5h | 2012-12-14 A | 3 | 100% |  | 0d |  | Software Architect; Project Manager |  |  |
| 5 | 2.3 | Mandatory NCI Training and Account Setup | 1.25d | 2012-12-17 A | 4 | 100% | 0d | 0d |  |  | 10h | 10h |
| 6 | 2.4 | Migrate Training Grid to NCI | 45d | 2013-01-03 A | 4 | 7% |  | 0d |  | Software Architect; Software Developer |  |  |
| 7 | 2.5 | **Migrate from Globus to WS* (new tech stack)** | 0d | 2013-01-03 | 4 |  |  | 0d |  |  |  |  |
| 8 | 2.5.1 | Develop Migration Plan | 3w | 2013-01-03 | 4 |  |  | 0d |  | Project Manager | 120h |  |
| 9 | 2.5.2 | Design Review Meeting | 2h | 2013-01-24 | 8 |  |  | 0d |  | SAIC-F Technical Project Manager; Software Architect; Project Manager |  |  |
| 10 | 2.5.3 | Begin Development | 1mo | 2013-03-01 | 9 |  |  | 0d | as late as possible | Software Developer; Software Architect | 320h |  |
| 11 | 2.6 | **Migrate to SHA-2** | 0d | 2013-01-03 | 4 |  |  | 0d |  |  |  |  |
| 12 | 2.6.1 | Validate Prior SHA-2 work by caGrid team | 1w | 2013-01-03 | 4 |  |  | 0d |  | Software Architect | 40h |  |
| 13 | 2.6.2 | Design Approach | 1.5w | 2013-01-10 | 12 |  |  | 0d |  | Software Developer; Software Architect | 120h |  |
| 14 | 2.6.3 | Design Review Meeting | 2h | 2013-01-21 | 13 |  |  | 0d |  | SAIC-F Technical Project Manager; Project Manager; Software Architect |  |  |
| 15 | 2.6.4 | Begin Development | 2mo | 2013-02-01 | 14 |  |  | 0d | as late as possible | Software Developer | 320h |  |
| 16 | 2.7 | **XACML Authorization** | 0d | 2013-01-10 | 4 |  |  | 0d |  |  |  |  |
| 17 | 2.7.1 | Design Approach | 2w | 2013-01-10 | 12 |  |  | 0d |  | Software Architect; Software Developer | 160h |  |
| 18 | 2.7.2 | Design Review Meeting | 2h | 2013-01-24 | 17 |  |  | 0d |  | Software Architect; SAIC-F Technical Project Manager; Project Manager |  |  |
| 19 | 2.8 | Migration Plan: caGrid.org to NCI | 2.5d | 2013-01-03 | 4 |  |  | 0d |  | Project Manager; Software Architect | 40h |  |
| 20 | 2.9 | caGrid / NCI Wiki Site | 1w | 2013-01-03 | 4 |  |  | 0d | finish no later than 2013-01-22 | Project Manager | 40h |  |
| 21 | 2.10 | Migration to Open Source Community (OSDI) | 1mo | 2013-01-03 A | 4 | 3% |  | 0d |  | Software Architect | 160h |  |
| 22 | 2.11 | Information Systems Security Plan | 2w | 2013-01-03 | 4 |  |  | 0d |  | Software Architect | 80h |  |
| 23 | 2.12 | Technical Project Plan | 1w | 2013-01-03 A | 4 | 6% |  | 0d | finish no later than 2013-01-22 | Software Architect; Project Manager | 80h |  |
| 24 | 2.13 | Financial Project Plan | 1w | 2013-01-03 | 4 |  |  | 0d |  | Project Manager; Software Architect | 80h |  |
| 25 | 2.14 | Quarterly In-Process Review | 2h | 2013-03-29 | 24, 20, 10, 23, 19, 15, 22 |  |  | 0d |  | Software Architect; SAIC-F Technical Project Manager; Project Manager; NCI Project Officer |  |  |
| 26 | 2.15 | End Iteration 1 | 0h | 2013-03-29 | 25 |  |  | 0d | must finish on 2013-03-29 |  |  |  |

| ID | WBS | Task | Duration | Start | Predecessors | Total slack | Constraint | Resources | Work |
| --- | --- | --- | --- | --- | --- | --- | --- | --- | --- |
| 27 | 3 | **Iteration 2 - Implementation** | 0d | 2013-04-01 |  | 0d | must start on 2013-04-01 |  |  |
| 28 | 3.1 | Start | 0h | 2013-04-01 | 26 | 0d |  |  |  |
| 29 | 3.2 | **Migrate from Globus to WS*** | 0d | 2013-04-01 |  | 0d |  |  |  |
| 30 | 3.2.1 | Software Development | 60d | 2013-04-01 | 10 | 0d |  | Software Developer |  |
| 31 | 3.3 | **Migrate to SHA-2** | 0d | 2013-04-01 |  | 0d |  |  |  |
| 32 | 3.3.1 | Software Development | 30d | 2013-04-01 | 15 | 0d |  | Software Developer |  |
| 33 | 3.4 | **XACML Authorization** | 0d | 2013-04-01 |  | 0d |  |  |  |
| 34 | 3.4.1 | Software Development | 30d | 2013-04-01 | 18 | 0d |  | Software Developer |  |
| 35 | 3.5 | Simplify use of caGrid in Infrastructure | 20d | 2013-04-01 | 28 | 0d |  | Software Architect |  |
| 36 | 3.6 | Quarterly In-Process Review | 2h | 2013-06-24 | 35, 6, 28, 32, 30 | 0d |  | Project Manager; NCI Project Officer; SAIC-F Technical Project Manager; Software Architect |  |
| 37 | 3.7 | End Iteration 2 | 0h | 2013-06-24 | 36 | 0d |  |  |  |
| 38 | 4 | **Iteration 3 - Deployment and Delivery** | 0d | 2013-07-01 |  | 0d | must start on 2013-07-01 |  |  |
| 39 | 4.1 | Start | 0h | 2013-07-01 | 37 | 0d |  |  |  |
| 40 | 4.2 | Operational Readiness Review | 2h | 2013-07-01 | 39 | 0d |  | Project Manager; Software Architect; SAIC-F Technical Project Manager |  |
| 41 | 4.3 | **Migrate to SHA-2** | 0d | 2013-07-01 |  | 0d |  |  |  |
| 42 | 4.3.1 | Finish Development | 1.5mo | 2013-07-01 | 32 | 0d |  | Software Developer | 240h |
| 43 | 4.4 | **XACML Authorization** | 0d | 2013-07-01 |  | 0d |  |  |  |
| 44 | 4.4.1 | Finish Development | 1.5mo | 2013-07-01 | 34 | 0d |  | Software Developer | 240h |
| 45 | 4.5 | Quality Assurance | 3w | 2013-08-12 | 44, 42 | 0d |  | NCI Quality Assurance | 120h |
| 46 | 4.6 | Documentation | 2w | 2013-08-12 | 44, 30, 42, 26 | 0d |  | NCI Documentation | 80h |
| 47 | 4.7 | **Deployment** | 0d | 2013-07-01 |  | 0d |  |  |  |
| 48 | 4.7.1 | Architecture Review Checklist | 1w | 2013-07-01 | 40 | 0d |  | Project Manager | 40h |
| 49 | 4.7.2 | Deployment to Stage | 1w | 2013-09-02 | 46, 45 | 0d |  | NCI Systems | 40h |
| 50 | 4.7.3 | Deployment to Production | 1w | 2013-09-09 | 49 | 0d |  | NCI Systems | 40h |
| 51 | 4.8 | Quarterly In-Process Review | 2h | 2013-07-01 | 19, 21 | 0d |  | Software Architect; Project Manager; NCI Project Officer; SAIC-F Technical Project Manager |  |
| 52 | 4.9 | End Iteration 3 | 0h | 2013-07-01 | 51 | 0d |  |  |  |
| 53 | 5 | Project Summary Report | 5d | 2013-10-01 | 1, 52 | 0d |  | Project Manager |  |
